# ShawTrust_SD_Master_Plan_v0.2

Schedule from MS Project, 2011-11-14 to 2014-03-24.
Sony Electronics, Inc.

## Calendars

- Standard: Mon-Fri 08:00-12:00, 13:00-17:00; Sat-Sun off.

## Resources

| Resource |
| --- |
| dungnm |
| hant21 |
| hungnm |
| phongtv |
| nhanld |

## Schedule

| ID | WBS | Task | Duration | Start | Finish | Predecessors | Total slack | Free slack | Constraint | Resources | Work |
| --- | --- | --- | --- | --- | --- | --- | --- | --- | --- | --- | --- |
| 1 | 1 | **MockProject** | 614.6d | 2011-11-14 13:00 | 2014-03-24 08:48 |  | 0d |  |  |  | 6292.64h |
| 2 | 1.1 | **Initiation** | 1d | 2011-11-18 08:00 | 2011-11-18 17:00 |  | 610.85d |  |  |  |  |
| 3 | 1.1.1 | Project kick-off & introduction | 0.25d | 2011-11-18 08:00 | 2011-11-18 10:00 |  | 19d | 0d |  |  |  |
| 4 | 1.1.2 | Preparation & Study overview requirements | 0.5d | 2011-11-18 10:00 | 2011-11-18 15:00 | 3 | 610.85d | 0d |  |  |  |
| 5 | 1.1.3 | Requirement brainstorming | 0.25d | 2011-11-18 15:00 | 2011-11-18 17:00 | 4 | 19d | 1d |  |  |  |
| 6 | 1.2 | **Create document & Learning** | 8.25d | 2011-11-22 08:00 | 2011-12-02 10:00 |  | 603.1d |  |  |  | 184h |
| 7 | 1.2.1 | Build up work flow for module: 6.1,6.6, 6.7, 6.8 | 1.5d | 2011-11-22 08:00 | 2011-11-23 12:00 | 5 | 609.85d |  | start no earlier than 2011-11-22 08:00 |  |  |
| 8 | 1.2.2 | Build up work flow for module: 6.2 | 1.5d | 2011-11-22 08:00 | 2011-11-23 12:00 |  | 609.85d |  | start no earlier than 2011-11-22 08:00 | dungnm | 12h |
| 9 | 1.2.3 | Build up work flow for module: 6.3 | 1.5d | 2011-11-22 08:00 | 2011-11-23 12:00 |  | 609.85d |  | start no earlier than 2011-11-22 08:00 | hungnm | 12h |
| 10 | 1.2.4 | Build up work flow for module: 6.4 | 1.5d | 2011-11-22 08:00 | 2011-11-23 12:00 |  | 609.85d |  | start no earlier than 2011-11-22 08:00 | hant21 | 12h |
| 11 | 1.2.5 | Build up work flow for module: 6.5 | 1.5d | 2011-11-22 08:00 | 2011-11-23 12:00 |  | 608.35d | 0d | start no earlier than 2011-11-22 08:00 | phongtv | 12h |
| 12 | 1.2.6 | Template for prototype | 1.5d | 2011-11-23 13:00 | 2011-11-24 17:00 | 11 | 608.1d |  | start no earlier than 2011-11-22 08:00 |  |  |
| 13 | 1.2.7 | Craete Q&A document, Rick and issues document | 0.5d | 2011-11-23 08:00 | 2011-11-23 12:00 |  | 607.85d | 0d | start no earlier than 2011-11-23 08:00 | dungnm | 4h |
| 14 | 1.2.8 | Create prototype for module | 2d | 2011-11-23 13:00 | 2011-11-25 12:00 | 13 | 16d |  |  |  |  |
| 15 | 1.2.9 | Learning Spring dependency | 0.5d | 2011-11-23 08:00 | 2011-11-23 12:00 |  | 609.35d | 0d | start no earlier than 2011-11-23 08:00 | dungnm | 4h |
| 16 | 1.2.10 | Leaning Hibernate | 0.5d | 2011-11-23 13:00 | 2011-11-23 17:00 | 15 | 17.5d |  |  | phongtv | 4h |
| 17 | 1.2.11 | Create work flow document, project plan | 0.5d | 2011-11-23 08:00 | 2011-11-23 12:00 |  | 608.35d | 1.5d | start no earlier than 2011-11-23 08:00 | hant21 | 4h |
| 18 | 1.2.12 | Build up prototype for module: 6.1,6.6, 6.7, 6.8 | 1.5d | 2011-11-25 08:00 | 2011-11-28 12:00 | 17 | 606.85d |  | start no earlier than 2011-11-25 08:00 |  |  |
| 19 | 1.2.13 | Build up prototype for module: 6.2 | 1.5d | 2011-11-24 08:00 | 2011-11-25 12:00 |  | 607.85d |  | start no earlier than 2011-11-24 08:00 | dungnm | 12h |
| 20 | 1.2.14 | Build up prototype for module: 6.3 | 1.5d | 2011-11-24 08:00 | 2011-11-25 12:00 |  | 607.85d |  | start no earlier than 2011-11-24 08:00 | dungnm | 12h |
| 21 | 1.2.15 | Build up prototype for module: 6.4 | 1.5d | 2011-11-24 08:00 | 2011-11-25 12:00 |  | 607.85d |  | start no earlier than 2011-11-24 08:00 | hant21 | 12h |
| 22 | 1.2.16 | Build up prototype for module: 6.5 | 1.5d | 2011-11-24 08:00 | 2011-11-25 12:00 |  | 605.85d | 0d | start no earlier than 2011-11-24 08:00 | phongtv | 12h |
| 23 | 1.2.17 | Learning Spring dependency | 2d | 2011-11-25 13:00 | 2011-11-29 12:00 | 22 | 14d |  | finish no earlier than 2011-11-28 17:00 | dungnm; hungnm | 32h |
| 24 | 1.2.18 | Learning Hibernate | 4d | 2011-11-25 08:00 | 2011-11-30 17:00 |  | 603.1d | 0d | start no earlier than 2011-11-25 08:00 | hant21 | 32h |
| 25 | 1.2.19 | Demo hibernate | 0.5d | 2011-12-01 08:00 | 2011-12-01 12:00 | 24 | 602.85d | 0d |  | hant21 | 4h |
| 26 | 1.2.20 | Demo spring | 0.25d | 2011-12-01 13:00 | 2011-12-01 15:00 | 25 | 602.85d | 0d |  | dungnm; hungnm | 4h |
| 27 | 1.2.21 | Design database | 0.5d | 2011-12-01 15:00 | 2011-12-02 10:00 | 26 | 603.1d |  |  |  |  |
| 28 | 1.2.22 | High level design | 0.5d | 2011-11-29 13:00 | 2011-11-29 17:00 |  | 605.35d |  | finish no earlier than 2011-11-29 17:00 |  |  |

| ID | WBS | Task | Duration | Start | Finish | Predecessors | Total slack | Free slack | Constraint | Resources | Work |
| --- | --- | --- | --- | --- | --- | --- | --- | --- | --- | --- | --- |
| 29 | 1.3 | **Construction** | 614.6d | 2011-11-14 13:00 | 2014-03-24 08:48 |  | 0d |  |  |  | 5980.64h |
| 30 | 1.3.1 | **Iteration 1 - Login, menu, contact, addresslookup** | 9d | 2011-11-30 08:00 | 2011-12-12 17:00 |  | 594.1d |  |  |  | 144h |
| 31 | 1.3.1.1 | **Logon-Logout, menu** | 3d | 2011-11-30 08:00 | 2011-12-02 17:00 |  | 600.1d |  |  | nhanld | 48h |
| 32 | 1.3.1.1.1 | Class, Sequence digaram | 0.5d | 2011-11-30 13:00 | 2011-11-30 17:00 |  | 599.6d | 1.4d | start no earlier than 2011-11-30 13:00 | nhanld | 4h |
| 33 | 1.3.1.1.2 | Pseudo-code | 0.5d | 2011-11-30 08:00 | 2011-11-30 12:00 |  | 602.6d |  | start no earlier than 2011-11-30 08:00 | nhanld | 4h |
| 34 | 1.3.1.1.3 | Prepare for Unit testing | 0.1d | 2011-12-01 08:00 | 2011-12-01 08:48 |  | 600.1d | 0d | start no earlier than 2011-12-01 08:00 | nhanld | 0.8h |
| 35 | 1.3.1.1.4 | Code | 1.3d | 2011-12-01 08:48 | 2011-12-02 11:12 | 34 | 600.1d | 0d |  | nhanld | 10.4h |
| 36 | 1.3.1.1.5 | Self code review | 0.1d | 2011-12-02 11:12 | 2011-12-02 12:00 | 32, 35 | 600.1d | 0d |  | nhanld | 0.8h |
| 37 | 1.3.1.1.6 | Peer code review | 0.1d | 2011-12-02 13:00 | 2011-12-02 13:48 | 36 | 600.1d | 0d |  | nhanld | 0.8h |
| 38 | 1.3.1.1.7 | Prepare UT script | 0.2d | 2011-12-02 13:48 | 2011-12-02 15:24 | 37 | 600.1d | 0d |  | nhanld | 1.6h |
| 39 | 1.3.1.1.8 | Perform UT and fix bug | 0.2d | 2011-12-02 15:24 | 2011-12-02 17:00 | 38 | 600.1d |  |  | nhanld | 1.6h |
| 40 | 1.3.1.2 | **Contact** | 3d | 2011-12-05 08:00 | 2011-12-07 17:00 |  | 597.1d |  |  | nhanld | 48h |
| 41 | 1.3.1.2.1 | Class, Sequence digaram | 0.5d | 2011-12-05 08:00 | 2011-12-05 12:00 | 32SS | 597.1d | 0d | start no earlier than 2011-12-05 08:00 | nhanld | 4h |
| 42 | 1.3.1.2.2 | Pseudo-code | 0.5d | 2011-12-05 13:00 | 2011-12-05 17:00 | 41 | 597.1d | 0d |  | nhanld | 4h |
| 43 | 1.3.1.2.3 | Prepare for Unit testing | 0.1d | 2011-12-06 08:00 | 2011-12-06 08:48 | 42 | 597.1d | 0d |  | nhanld | 0.8h |
| 44 | 1.3.1.2.4 | Code | 1d | 2011-12-06 08:48 | 2011-12-07 08:48 | 43 | 597.1d | 0d |  | nhanld | 8h |
| 45 | 1.3.1.2.5 | Self code review | 0.1d | 2011-12-07 08:48 | 2011-12-07 09:36 | 41, 44 | 597.1d | 0d |  | nhanld | 0.8h |
| 46 | 1.3.1.2.6 | Peer code review | 0.1d | 2011-12-07 09:36 | 2011-12-07 10:24 | 45 | 597.1d | 0d |  | nhanld | 0.8h |
| 47 | 1.3.1.2.7 | Prepare UT script | 0.3d | 2011-12-07 10:24 | 2011-12-07 13:48 | 46 | 597.1d | 0d |  | nhanld | 2.4h |
| 48 | 1.3.1.2.8 | Perform UT and fix bug | 0.4d | 2011-12-07 13:48 | 2011-12-07 17:00 | 47 | 597.1d |  |  | nhanld | 3.2h |
| 49 | 1.3.1.3 | **Address lookup** | 3d | 2011-12-08 08:00 | 2011-12-12 17:00 |  | 594.1d |  |  | nhanld | 48h |
| 50 | 1.3.1.3.1 | Class, Sequence digaram | 0.5d | 2011-12-08 08:00 | 2011-12-08 12:00 | 32SS | 594.1d | 0d | start no earlier than 2011-12-08 08:00 | nhanld | 4h |
| 51 | 1.3.1.3.2 | Pseudo-code | 0.5d | 2011-12-08 13:00 | 2011-12-08 17:00 | 50 | 594.1d | 0d |  | nhanld | 4h |
| 52 | 1.3.1.3.3 | Prepare for Unit testing | 0.1d | 2011-12-09 08:00 | 2011-12-09 08:48 | 51 | 594.1d | 0d |  | nhanld | 0.8h |
| 53 | 1.3.1.3.4 | Code | 1d | 2011-12-09 08:48 | 2011-12-12 08:48 | 52 | 594.1d | 0d |  | nhanld | 8h |
| 54 | 1.3.1.3.5 | Self code review | 0.1d | 2011-12-12 08:48 | 2011-12-12 09:36 | 50, 53 | 594.1d | 0d |  | nhanld | 0.8h |
| 55 | 1.3.1.3.6 | Peer code review | 0.1d | 2011-12-12 09:36 | 2011-12-12 10:24 | 54 | 594.1d | 0d |  | nhanld | 0.8h |
| 56 | 1.3.1.3.7 | Prepare UT script | 0.3d | 2011-12-12 10:24 | 2011-12-12 13:48 | 55 | 594.1d | 0d |  | nhanld | 2.4h |
| 57 | 1.3.1.3.8 | Perform UT and fix bug | 0.4d | 2011-12-12 13:48 | 2011-12-12 17:00 | 56 | 594.1d |  |  | nhanld | 3.2h |

Notes:
- 31: Logon logout, menu
- 40: (List, Add, Amend)
- 49: (List, Add, Amend)

| ID | WBS | Task | Duration | Start | Finish | Predecessors | Total slack | Free slack | Constraint | Resources | Work |
| --- | --- | --- | --- | --- | --- | --- | --- | --- | --- | --- | --- |
| 58 | 1.3.2 | **Iteration 2 - Organization Maintenance** | 12.5d | 2011-11-30 08:00 | 2011-12-16 12:00 |  | 590.6d |  |  |  | 240h |
| 59 | 1.3.2.1 | **Organization** | 3d | 2011-11-30 08:00 | 2011-12-02 17:00 |  | 600.1d |  |  | dungnm | 48h |
| 60 | 1.3.2.1.1 | Class, Sequence digaram | 0.5d | 2011-11-30 08:00 | 2011-11-30 12:00 |  | 600.1d | 0d | start no earlier than 2011-11-30 08:00 | dungnm | 4h |
| 61 | 1.3.2.1.2 | Pseudo-code | 0.5d | 2011-11-30 13:00 | 2011-11-30 17:00 | 60 | 600.1d | 0d |  | dungnm | 4h |
| 62 | 1.3.2.1.3 | Prepare for Unit testing | 0.1d | 2011-12-01 08:00 | 2011-12-01 08:48 | 61 | 600.1d | 0d |  | dungnm | 0.8h |
| 63 | 1.3.2.1.4 | Code | 1d | 2011-12-01 08:48 | 2011-12-02 08:48 | 62 | 600.1d | 0d |  | dungnm | 8h |
| 64 | 1.3.2.1.5 | Self code review | 0.1d | 2011-12-02 08:48 | 2011-12-02 09:36 | 60, 63 | 600.1d | 0d |  | dungnm | 0.8h |
| 65 | 1.3.2.1.6 | Peer code review | 0.1d | 2011-12-02 09:36 | 2011-12-02 10:24 | 64 | 600.1d | 0d |  | dungnm | 0.8h |
| 66 | 1.3.2.1.7 | Prepare UT script | 0.3d | 2011-12-02 10:24 | 2011-12-02 13:48 | 65 | 600.1d | 0d |  | dungnm | 2.4h |
| 67 | 1.3.2.1.8 | Perform UT and fix bug | 0.4d | 2011-12-02 13:48 | 2011-12-02 17:00 | 66 | 600.1d |  |  | dungnm | 3.2h |
| 68 | 1.3.2.2 | **Supporting Materials** | 3d | 2011-12-05 08:00 | 2011-12-07 17:00 |  | 597.1d |  |  | dungnm | 48h |
| 69 | 1.3.2.2.1 | Class, Sequence digaram | 0.5d | 2011-12-05 08:00 | 2011-12-05 12:00 | 60SS | 597.1d | 0d | start no earlier than 2011-12-05 08:00 | dungnm | 4h |
| 70 | 1.3.2.2.2 | Pseudo-code | 0.5d | 2011-12-05 13:00 | 2011-12-05 17:00 | 69 | 597.1d | 0d |  | dungnm | 4h |
| 71 | 1.3.2.2.3 | Prepare for Unit testing | 0.1d | 2011-12-06 08:00 | 2011-12-06 08:48 | 70 | 597.1d | 0d |  | dungnm | 0.8h |
| 72 | 1.3.2.2.4 | Code | 1d | 2011-12-06 08:48 | 2011-12-07 08:48 | 71 | 597.1d | 0d |  | dungnm | 8h |
| 73 | 1.3.2.2.5 | Self code review | 0.1d | 2011-12-07 08:48 | 2011-12-07 09:36 | 69, 72 | 597.1d | 0d |  | dungnm | 0.8h |
| 74 | 1.3.2.2.6 | Peer code review | 0.1d | 2011-12-07 09:36 | 2011-12-07 10:24 | 73 | 597.1d | 0d |  | dungnm | 0.8h |
| 75 | 1.3.2.2.7 | Prepare UT script | 0.3d | 2011-12-07 10:24 | 2011-12-07 13:48 | 74 | 597.1d | 0d |  | dungnm | 2.4h |
| 76 | 1.3.2.2.8 | Perform UT and fix bug | 0.4d | 2011-12-07 13:48 | 2011-12-07 17:00 | 75 | 597.1d |  |  | dungnm | 3.2h |
| 77 | 1.3.2.3 | **Directorates** | 3d | 2011-12-08 08:00 | 2011-12-12 17:00 |  | 594.1d |  |  | dungnm | 48h |
| 78 | 1.3.2.3.1 | Class, Sequence digaram | 0.5d | 2011-12-08 08:00 | 2011-12-08 12:00 | 60SS | 594.1d | 0d | start no earlier than 2011-12-08 08:00 | dungnm | 4h |
| 79 | 1.3.2.3.2 | Pseudo-code | 0.5d | 2011-12-08 13:00 | 2011-12-08 17:00 | 78 | 594.1d | 0d |  | dungnm | 4h |
| 80 | 1.3.2.3.3 | Prepare for Unit testing | 0.1d | 2011-12-09 08:00 | 2011-12-09 08:48 | 79 | 594.1d | 0d |  | dungnm | 0.8h |
| 81 | 1.3.2.3.4 | Code | 1d | 2011-12-09 08:48 | 2011-12-12 08:48 | 80 | 594.1d | 0d |  | dungnm | 8h |
| 82 | 1.3.2.3.5 | Self code review | 0.1d | 2011-12-12 08:48 | 2011-12-12 09:36 | 78, 81 | 594.1d | 0d |  | dungnm | 0.8h |
| 83 | 1.3.2.3.6 | Peer code review | 0.1d | 2011-12-12 09:36 | 2011-12-12 10:24 | 82 | 594.1d | 0d |  | dungnm | 0.8h |
| 84 | 1.3.2.3.7 | Prepare UT script | 0.3d | 2011-12-12 10:24 | 2011-12-12 13:48 | 83 | 594.1d | 0d |  | dungnm | 2.4h |
| 85 | 1.3.2.3.8 | Perform UT and fix bug | 0.4d | 2011-12-12 13:48 | 2011-12-12 17:00 | 84 | 594.1d |  |  | dungnm | 3.2h |

Notes:
- 59: (List, Add, Amend)
- 68: (List, Add, Amend, Mark)
- 77: (List, Add, Amend, Mark)

| ID | WBS | Task | Duration | Start | Finish | Predecessors | Total slack | Free slack | Constraint | Resources | Work |
| --- | --- | --- | --- | --- | --- | --- | --- | --- | --- | --- | --- |
| 86 | 1.3.2.4 | **Department** | 3d | 2011-12-13 13:00 | 2011-12-16 12:00 |  | 590.6d |  |  | dungnm | 48h |
| 87 | 1.3.2.4.1 | Class, Sequence digaram | 0.5d | 2011-12-13 13:00 | 2011-12-13 17:00 | 60SS | 590.6d | 0d | start no earlier than 2011-12-13 13:00 | dungnm | 4h |
| 88 | 1.3.2.4.2 | Pseudo-code | 0.5d | 2011-12-14 08:00 | 2011-12-14 12:00 | 87 | 590.6d | 0d |  | dungnm | 4h |
| 89 | 1.3.2.4.3 | Prepare for Unit testing | 0.1d | 2011-12-14 13:00 | 2011-12-14 13:48 | 88 | 590.6d | 0d |  | dungnm | 0.8h |
| 90 | 1.3.2.4.4 | Code | 1d | 2011-12-14 13:48 | 2011-12-15 13:48 | 89 | 590.6d | 0d |  | dungnm | 8h |
| 91 | 1.3.2.4.5 | Self code review | 0.1d | 2011-12-15 13:48 | 2011-12-15 14:36 | 87, 90 | 590.6d | 0d |  | dungnm | 0.8h |
| 92 | 1.3.2.4.6 | Peer code review | 0.1d | 2011-12-15 14:36 | 2011-12-15 15:24 | 91 | 590.6d | 0d |  | dungnm | 0.8h |
| 93 | 1.3.2.4.7 | Prepare UT script | 0.3d | 2011-12-15 15:24 | 2011-12-16 08:48 | 92 | 590.6d | 0d |  | dungnm | 2.4h |
| 94 | 1.3.2.4.8 | Perform UT and fix bug | 0.4d | 2011-12-16 08:48 | 2011-12-16 12:00 | 93 | 590.6d |  |  | dungnm | 3.2h |
| 95 | 1.3.2.5 | **Team** | 3d | 2011-11-30 08:00 | 2011-12-02 17:00 |  | 600.1d |  |  | hungnm | 48h |
| 96 | 1.3.2.5.1 | Class, Sequence digaram | 0.5d | 2011-11-30 08:00 | 2011-11-30 12:00 | 60SS | 600.1d | 0d |  | hungnm | 4h |
| 97 | 1.3.2.5.2 | Pseudo-code | 0.5d | 2011-11-30 13:00 | 2011-11-30 17:00 | 96 | 600.1d | 0d |  | hungnm | 4h |
| 98 | 1.3.2.5.3 | Prepare for Unit testing | 0.1d | 2011-12-01 08:00 | 2011-12-01 08:48 | 97 | 600.1d | 0d |  | hungnm | 0.8h |
| 99 | 1.3.2.5.4 | Code | 1d | 2011-12-01 08:48 | 2011-12-02 08:48 | 98 | 600.1d | 0d |  | hungnm | 8h |
| 100 | 1.3.2.5.5 | Self code review | 0.1d | 2011-12-02 08:48 | 2011-12-02 09:36 | 96, 99 | 600.1d | 0d |  | hungnm | 0.8h |
| 101 | 1.3.2.5.6 | Peer code review | 0.1d | 2011-12-02 09:36 | 2011-12-02 10:24 | 100 | 600.1d | 0d |  | hungnm | 0.8h |
| 102 | 1.3.2.5.7 | Prepare UT script | 0.3d | 2011-12-02 10:24 | 2011-12-02 13:48 | 101 | 600.1d | 0d |  | hungnm | 2.4h |
| 103 | 1.3.2.5.8 | Perform UT and fix bug | 0.4d | 2011-12-02 13:48 | 2011-12-02 17:00 | 102 | 600.1d |  |  | hungnm | 3.2h |
| 104 | 1.3.3 | **Iteration 3 - Services, Programme** | 6.5d | 2011-12-05 08:00 | 2011-12-13 12:00 |  | 593.6d |  |  |  | 95.2h |
| 105 | 1.3.3.1 | **Service** | 2.9d | 2011-12-05 08:00 | 2011-12-07 16:12 |  | 597.1d |  |  | hungnm | 47.2h |
| 106 | 1.3.3.1.1 | Class, Sequence digaram | 0.5d | 2011-12-05 08:00 | 2011-12-05 12:00 |  | 597.1d | 0d | start no earlier than 2011-12-05 08:00 | hungnm | 4h |
| 107 | 1.3.3.1.2 | Pseudo-code | 0.5d | 2011-12-05 13:00 | 2011-12-05 17:00 | 106 | 599d | 0d |  | hungnm | 4h |
| 108 | 1.3.3.1.3 | Prepare for Unit testing | 0.1d | 2011-12-06 08:00 | 2011-12-06 08:48 | 107 | 599d |  |  | hungnm | 0.8h |
| 109 | 1.3.3.1.4 | Code | 1d | 2011-12-06 08:00 | 2011-12-06 17:00 |  | 597.2d | 0d | start no earlier than 2011-12-06 08:00 | hungnm | 8h |
| 110 | 1.3.3.1.5 | Self code review | 0.1d | 2011-12-07 08:00 | 2011-12-07 08:48 | 106, 109 | 597.2d | 0d |  | hungnm | 0.8h |
| 111 | 1.3.3.1.6 | Peer code review | 0.1d | 2011-12-07 08:48 | 2011-12-07 09:36 | 110 | 597.2d | 0d |  | hungnm | 0.8h |
| 112 | 1.3.3.1.7 | Prepare UT script | 0.3d | 2011-12-07 09:36 | 2011-12-07 12:00 | 111 | 597.2d | 0d |  | hungnm | 2.4h |
| 113 | 1.3.3.1.8 | Perform UT and fix bug | 0.4d | 2011-12-07 13:00 | 2011-12-07 16:12 | 112 | 597.2d |  |  | hungnm | 3.2h |

Notes:
- 86: (List, Add, Amend, Mark)
- 95: (List, Add, Amend, Mark)
- 105: (List, Add, Amend, Mark)

| ID | WBS | Task | Duration | Start | Finish | Predecessors | Total slack | Free slack | Constraint | Resources | Work |
| --- | --- | --- | --- | --- | --- | --- | --- | --- | --- | --- | --- |
| 114 | 1.3.3.2 | **Programme** | 3d | 2011-12-08 13:00 | 2011-12-13 12:00 |  | 593.6d |  |  | hungnm | 48h |
| 115 | 1.3.3.2.1 | Class, Sequence digaram | 0.5d | 2011-12-08 13:00 | 2011-12-08 17:00 | 106SS | 593.6d | 0d | start no earlier than 2011-12-08 13:00 | hungnm | 4h |
| 116 | 1.3.3.2.2 | Pseudo-code | 0.5d | 2011-12-09 08:00 | 2011-12-09 12:00 | 115 | 593.6d | 0d |  | hungnm | 4h |
| 117 | 1.3.3.2.3 | Prepare for Unit testing | 0.1d | 2011-12-09 13:00 | 2011-12-09 13:48 | 116 | 593.6d | 0d |  | hungnm | 0.8h |
| 118 | 1.3.3.2.4 | Code | 1d | 2011-12-09 13:48 | 2011-12-12 13:48 | 117 | 593.6d | 0d |  | hungnm | 8h |
| 119 | 1.3.3.2.5 | Self code review | 0.1d | 2011-12-12 13:48 | 2011-12-12 14:36 | 115, 118 | 593.6d | 0d |  | hungnm | 0.8h |
| 120 | 1.3.3.2.6 | Peer code review | 0.1d | 2011-12-12 14:36 | 2011-12-12 15:24 | 119 | 593.6d | 0d |  | hungnm | 0.8h |
| 121 | 1.3.3.2.7 | Prepare UT script | 0.3d | 2011-12-12 15:24 | 2011-12-13 08:48 | 120 | 593.6d | 0d |  | hungnm | 2.4h |
| 122 | 1.3.3.2.8 | Perform UT and fix bug | 0.4d | 2011-12-13 08:48 | 2011-12-13 12:00 | 121 | 593.6d |  |  | hungnm | 3.2h |
| 123 | 1.3.4 | **Iteration 4 -Trust Region, Trust District, Govermenet list, Type of Business lookup** | 614.6d | 2011-11-14 13:00 | 2014-03-24 08:48 |  | 0d |  |  |  | 5501.44h |
| 124 | 1.3.4.1 | **Trust Region** | 3d | 2011-11-30 08:00 | 2011-12-02 17:00 |  | 3.5d |  |  | hant21 | 48h |
| 125 | 1.3.4.1.1 | Class, Sequence digaram | 0.5d | 2011-11-30 08:00 | 2011-11-30 12:00 |  | 3.5d | 0d | start no earlier than 2011-11-30 08:00 | hant21 | 4h |
| 126 | 1.3.4.1.2 | Pseudo-code | 0.5d | 2011-11-30 13:00 | 2011-11-30 17:00 | 125 | 600.1d | 0d |  | hant21 | 4h |
| 127 | 1.3.4.1.3 | Prepare for Unit testing | 0.1d | 2011-12-01 08:00 | 2011-12-01 08:48 | 126 | 600.1d | 0d |  | hant21 | 0.8h |
| 128 | 1.3.4.1.4 | Code | 1d | 2011-12-01 08:48 | 2011-12-02 08:48 | 127 | 600.1d | 0d |  | hant21 | 8h |
| 129 | 1.3.4.1.5 | Self code review | 0.1d | 2011-12-02 08:48 | 2011-12-02 09:36 | 125, 128 | 600.1d | 0d |  | hant21 | 0.8h |
| 130 | 1.3.4.1.6 | Peer code review | 0.1d | 2011-12-02 09:36 | 2011-12-02 10:24 | 129 | 600.1d | 0d |  | hant21 | 0.8h |
| 131 | 1.3.4.1.7 | Prepare UT script | 0.3d | 2011-12-02 10:24 | 2011-12-02 13:48 | 130 | 600.1d | 0d |  | hant21 | 2.4h |
| 132 | 1.3.4.1.8 | Perform UT and fix bug | 0.4d | 2011-12-02 13:48 | 2011-12-02 17:00 | 131 | 600.1d |  |  | hant21 | 3.2h |
| 133 | 1.3.4.2 | **Trust District** | 599.6d | 2011-12-05 13:00 | 2014-03-24 08:48 |  | 0d |  |  | hant21 | 4828.8h |
| 134 | 1.3.4.2.1 | Class, Sequence digaram | 0.5d | 2011-12-05 13:00 | 2011-12-05 17:00 | 125SS | 0d |  | start no earlier than 2011-12-05 13:00 | hant21 | 4h |
| 135 | 1.3.4.2.2 | Pseudo-code | 0.5d | 2011-12-06 08:00 | 2011-12-06 12:00 | 134 | 0d |  |  | hant21 | 4h |
| 136 | 1.3.4.2.3 | Prepare for Unit testing | 0.1d | 2011-12-06 13:00 | 2011-12-06 13:48 | 135 | 0d |  |  | hant21 | 0.8h |
| 137 | 1.3.4.2.4 | Code | 1d | 2011-12-06 13:48 | 2011-12-07 13:48 | 136 | 0d |  |  | hant21 | 8h |
| 138 | 1.3.4.2.5 | Self code review | 1.1d | 2011-12-07 13:48 | 2014-03-21 10:24 | 134, 137 | 0d |  | start no earlier than 2009-08-21 08:00 | hant21 | 8.8h |
| 139 | 1.3.4.2.6 | Peer code review | 0.1d | 2014-03-21 10:24 | 2014-03-21 11:12 | 138 | 0d |  |  | hant21 | 0.8h |
| 140 | 1.3.4.2.7 | Prepare UT script | 0.3d | 2014-03-21 11:12 | 2014-03-21 14:36 | 139 | 0d |  |  | hant21 | 2.4h |
| 141 | 1.3.4.2.8 | Perform UT and fix bug | 0.4d | 2014-03-21 14:36 | 2014-03-24 08:48 | 140 | 0d |  | start no earlier than 2011-12-07 15:24 | hant21 | 3.2h |

Notes:
- 114: (List, Add, Amend, Mark)
- 124: (List, Add, Amend, Mark)
- 133: (List, Add, Amend, Mark)

| ID | WBS | Task | Duration | Start | Finish | Predecessors | Total slack | Free slack | Constraint | Resources | Work |
| --- | --- | --- | --- | --- | --- | --- | --- | --- | --- | --- | --- |
| 142 | 1.3.4.3 | **Gov Office** | 24.02d | 2011-11-14 13:00 | 2011-12-16 13:09 |  | 590.58d |  |  | hant21 | 624.64h |
| 143 | 1.3.4.3.1 | Class, Sequence digaram | 0.5d | 2011-12-08 08:00 | 2011-12-08 12:00 | 125SS | 594.1d | 0d | start no earlier than 2011-12-08 08:00 | hant21 | 4h |
| 144 | 1.3.4.3.2 | Pseudo-code | 0.5d | 2011-12-08 13:00 | 2011-12-08 17:00 | 143 | 594.1d | 0d |  | hant21 | 4h |
| 145 | 1.3.4.3.3 | Prepare for Unit testing | 0.1d | 2011-12-09 08:00 | 2011-12-09 08:48 | 144 | 594.1d | 0d |  | hant21 | 0.8h |
| 146 | 1.3.4.3.4 | Code | 1d | 2011-12-09 08:48 | 2011-12-12 08:48 | 145 | 594.1d | 0d |  | hant21 | 8h |
| 147 | 1.3.4.3.5 | Self code review | 0.1d | 2011-12-12 08:48 | 2011-12-12 09:36 | 143, 146 | 594.1d | 0d |  | hant21 | 0.8h |
| 148 | 1.3.4.3.6 | Peer code review | 0.1d | 2011-12-12 09:36 | 2011-12-12 10:24 | 147 | 594.1d | 0d |  | hant21 | 0.8h |
| 149 | 1.3.4.3.7 | Prepare UT script | 0.3d | 2011-12-12 10:24 | 2011-12-12 13:48 | 148 | 594.1d | 0d |  | hant21 | 2.4h |
| 150 | 1.3.4.3.8 | Perform UT and fix bug | 0.4d | 2011-12-12 13:48 | 2011-12-12 17:00 | 149 | 594.1d |  |  | hant21 | 3.2h |
| 151 | 1.3.4.3.9 | **Type of Business lookup** | 24.02d | 2011-11-14 13:00 | 2011-12-16 13:09 |  | 590.58d |  |  | hant21 | 408.48h |
| 152 | 1.3.4.3.9.1 | Class, Sequence digaram | 0.5d | 2011-11-14 13:00 | 2011-11-14 17:00 |  | 611.6d | 0d | start no earlier than 2011-11-14 13:00 | hant21 | 4h |
| 153 | 1.3.4.3.9.2 | Pseudo-code | 0.5d | 2011-11-15 08:00 | 2011-11-15 12:00 | 152 | 611.6d | 0d |  | hant21 | 4h |
| 154 | 1.3.4.3.9.3 | Prepare for Unit testing | 0.1d | 2011-11-15 13:00 | 2011-11-15 13:48 | 153 | 611.6d | 0d |  | hant21 | 0.8h |
| 155 | 1.3.4.3.9.4 | Code | 1d | 2011-11-15 13:48 | 2011-11-16 13:48 | 154 | 611.6d | 0d |  | hant21 | 8h |
| 156 | 1.3.4.3.9.5 | Self code review | 0.1d | 2011-11-16 13:48 | 2011-11-16 14:36 | 152, 155 | 611.6d | 0d |  | hant21 | 0.8h |
| 157 | 1.3.4.3.9.6 | Peer code review | 0.1d | 2011-11-16 14:36 | 2011-11-16 15:24 | 156 | 611.6d | 0d |  | hant21 | 0.8h |
| 158 | 1.3.4.3.9.7 | Prepare UT script | 0.3d | 2011-11-16 15:24 | 2011-11-17 08:48 | 157 | 611.6d | 0d |  | hant21 | 2.4h |
| 159 | 1.3.4.3.9.8 | Perform UT and fix bug | 0.4d | 2011-11-17 08:48 | 2011-11-17 12:00 | 158 | 611.6d |  |  | hant21 | 3.2h |
| 161 | 1.3.4.3.9.9 | **Iteration 5 -Premise, Facility, Volunteering, Minor Work Projects** | 12.52d | 2011-11-30 08:00 | 2011-12-16 13:09 |  | 590.58d |  |  |  | 192.32h |
| 162 | 1.3.4.3.9.9.1 | **Premise** | 3d | 2011-11-30 08:00 | 2011-12-02 17:00 |  | 600.08d |  |  | phongtv | 48h |
| 163 | 1.3.4.3.9.9.1.1 | Class, Sequence digaram | 0.5d | 2011-11-30 08:00 | 2011-11-30 12:00 |  | 600.08d | 0d | start no earlier than 2011-11-30 08:00 | phongtv | 4h |
| 164 | 1.3.4.3.9.9.1.2 | Pseudo-code | 0.5d | 2011-11-30 13:00 | 2011-11-30 17:00 | 163 | 600.1d | 0d |  | phongtv | 4h |
| 165 | 1.3.4.3.9.9.1.3 | Prepare for Unit testing | 0.1d | 2011-12-01 08:00 | 2011-12-01 08:48 | 164 | 600.1d | 0d |  | phongtv | 0.8h |
| 166 | 1.3.4.3.9.9.1.4 | Code | 1d | 2011-12-01 08:48 | 2011-12-02 08:48 | 165 | 600.1d | 0d |  | phongtv | 8h |
| 167 | 1.3.4.3.9.9.1.5 | Self code review | 0.1d | 2011-12-02 08:48 | 2011-12-02 09:36 | 163, 166 | 600.1d | 0d |  | phongtv | 0.8h |
| 168 | 1.3.4.3.9.9.1.6 | Peer code review | 0.1d | 2011-12-02 09:36 | 2011-12-02 10:24 | 167 | 600.1d | 0d |  | phongtv | 0.8h |
| 169 | 1.3.4.3.9.9.1.7 | Prepare UT script | 0.3d | 2011-12-02 10:24 | 2011-12-02 13:48 | 168 | 600.1d | 0d |  | phongtv | 2.4h |
| 170 | 1.3.4.3.9.9.1.8 | Perform UT and fix bug | 0.4d | 2011-12-02 13:48 | 2011-12-02 17:00 | 169 | 600.1d |  |  | phongtv | 3.2h |

Notes:
- 142: (List, Detail)
- 151: (List, Search)
- 162: (List, Add, Amend)

| ID | WBS | Task | Duration | Start | Finish | Predecessors | Total slack | Free slack | Constraint | Resources | Work |
| --- | --- | --- | --- | --- | --- | --- | --- | --- | --- | --- | --- |
| 171 | 1.3.4.3.9.9.2 | **Facility** | 3d | 2011-12-05 08:00 | 2011-12-07 17:00 |  | 597.1d |  |  | phongtv | 48h |
| 172 | 1.3.4.3.9.9.2.1 | Class, Sequence digaram | 0.5d | 2011-12-05 08:00 | 2011-12-05 12:00 | 163SS | 597.1d | 0d | start no earlier than 2011-12-05 08:00 | phongtv | 4h |
| 173 | 1.3.4.3.9.9.2.2 | Pseudo-code | 0.5d | 2011-12-05 13:00 | 2011-12-05 17:00 | 172 | 597.1d | 0d |  | phongtv | 4h |
| 174 | 1.3.4.3.9.9.2.3 | Prepare for Unit testing | 0.1d | 2011-12-06 08:00 | 2011-12-06 08:48 | 173 | 597.1d | 0d |  | phongtv | 0.8h |
| 175 | 1.3.4.3.9.9.2.4 | Code | 1d | 2011-12-06 08:48 | 2011-12-07 08:48 | 174 | 597.1d | 0d |  | phongtv | 8h |
| 176 | 1.3.4.3.9.9.2.5 | Self code review | 0.1d | 2011-12-07 08:48 | 2011-12-07 09:36 | 172, 175 | 597.1d | 0d |  | phongtv | 0.8h |
| 177 | 1.3.4.3.9.9.2.6 | Peer code review | 0.1d | 2011-12-07 09:36 | 2011-12-07 10:24 | 176 | 597.1d | 0d |  | phongtv | 0.8h |
| 178 | 1.3.4.3.9.9.2.7 | Prepare UT script | 0.3d | 2011-12-07 10:24 | 2011-12-07 13:48 | 177 | 597.1d | 0d |  | phongtv | 2.4h |
| 179 | 1.3.4.3.9.9.2.8 | Perform UT and fix bug | 0.4d | 2011-12-07 13:48 | 2011-12-07 17:00 | 178 | 597.1d |  |  | phongtv | 3.2h |
| 180 | 1.3.4.3.9.9.3 | **Volunteering** | 3d | 2011-12-08 08:00 | 2011-12-12 17:00 |  | 594.1d |  |  | phongtv | 48h |
| 181 | 1.3.4.3.9.9.3.1 | Class, Sequence digaram | 0.5d | 2011-12-08 08:00 | 2011-12-08 12:00 | 163SS | 594.1d | 0d | start no earlier than 2011-12-08 08:00 | phongtv | 4h |
| 182 | 1.3.4.3.9.9.3.2 | Pseudo-code | 0.5d | 2011-12-08 13:00 | 2011-12-08 17:00 | 181 | 594.1d | 0d |  | phongtv | 4h |
| 183 | 1.3.4.3.9.9.3.3 | Prepare for Unit testing | 0.1d | 2011-12-09 08:00 | 2011-12-09 08:48 | 182 | 594.1d | 0d |  | phongtv | 0.8h |
| 184 | 1.3.4.3.9.9.3.4 | Code | 1d | 2011-12-09 08:48 | 2011-12-12 08:48 | 183 | 594.1d | 0d |  | phongtv | 8h |
| 185 | 1.3.4.3.9.9.3.5 | Self code review | 0.1d | 2011-12-12 08:48 | 2011-12-12 09:36 | 181, 184 | 594.1d | 0d |  | phongtv | 0.8h |
| 186 | 1.3.4.3.9.9.3.6 | Peer code review | 0.1d | 2011-12-12 09:36 | 2011-12-12 10:24 | 185 | 594.1d | 0d |  | phongtv | 0.8h |
| 187 | 1.3.4.3.9.9.3.7 | Prepare UT script | 0.3d | 2011-12-12 10:24 | 2011-12-12 13:48 | 186 | 594.1d | 0d |  | phongtv | 2.4h |
| 188 | 1.3.4.3.9.9.3.8 | Perform UT and fix bug | 0.4d | 2011-12-12 13:48 | 2011-12-12 17:00 | 187 | 594.1d |  |  | phongtv | 3.2h |
| 189 | 1.3.4.3.9.9.4 | **Minor Work Projects** | 3.02d | 2011-12-13 13:00 | 2011-12-16 13:09 |  | 590.58d |  |  | phongtv | 48.32h |
| 190 | 1.3.4.3.9.9.4.1 | Class, Sequence digaram | 0.5d | 2011-12-13 13:00 | 2011-12-13 17:00 | 163SS | 590.58d | 0d | start no earlier than 2011-12-13 13:00 | phongtv | 4h |
| 191 | 1.3.4.3.9.9.4.2 | Pseudo-code | 0.5d | 2011-12-14 08:00 | 2011-12-14 12:00 | 190 | 590.58d | 0d |  | phongtv | 4h |
| 192 | 1.3.4.3.9.9.4.3 | Prepare for Unit testing | 0.1d | 2011-12-14 13:00 | 2011-12-14 13:48 | 191 | 590.58d | 0d |  | phongtv | 0.8h |
| 193 | 1.3.4.3.9.9.4.4 | Code | 1d | 2011-12-14 13:48 | 2011-12-15 13:48 | 192 | 590.58d | 0d |  | phongtv | 8h |
| 194 | 1.3.4.3.9.9.4.5 | Self code review | 0.1d | 2011-12-15 13:48 | 2011-12-15 14:36 | 190, 193 | 590.58d | 0d |  | phongtv | 0.8h |
| 195 | 1.3.4.3.9.9.4.6 | Peer code review | 0.12d | 2011-12-15 14:36 | 2011-12-15 15:33 | 194 | 590.58d | 0d |  | phongtv | 0.96h |
| 196 | 1.3.4.3.9.9.4.7 | Prepare UT script | 0.3d | 2011-12-15 15:33 | 2011-12-16 08:57 | 195 | 590.58d | 0d |  | phongtv | 2.4h |
| 197 | 1.3.4.3.9.9.4.8 | Perform UT and fix bug | 0.4d | 2011-12-16 08:57 | 2011-12-16 13:09 | 196 | 590.58d |  |  | phongtv | 3.2h |

Notes:
- 171: (List, Add, Amend, Mark)
- 180: (List, Add, Amend, Mark)
- 189: (List, Add, Amend, Mark)

| ID | WBS | Task | Duration | Start | Finish | Predecessors | Total slack | Free slack | Constraint | Resources | Work |
| --- | --- | --- | --- | --- | --- | --- | --- | --- | --- | --- | --- |
| 199 | 1.4 | **Integrate modules** | 4d | 2011-12-19 08:00 | 2011-12-22 17:00 |  | 586.1d |  |  |  | 128h |
| 200 | 1.4.1 | Merge modules | 1d | 2011-12-19 08:00 | 2011-12-19 17:00 |  | 587.85d | 0d | start no earlier than 2011-12-19 08:00 | nhanld | 8h |
| 201 | 1.4.2 | System test | 1.25d | 2011-12-20 08:00 | 2011-12-21 10:00 | 200 | 587.85d |  |  | phongtv; hant21; hungnm; dungnm | 40h |
| 202 | 1.4.3 | **Help document** | 2d | 2011-12-21 08:00 | 2011-12-22 17:00 |  | 588.35d |  |  |  | 80h |
| 203 | 1.4.3.1 | Write help documents | 2d | 2011-12-21 08:00 | 2011-12-22 17:00 |  | 588.35d |  | start no earlier than 2011-12-21 08:00 | phongtv; hant21; hungnm; dungnm; nhanld | 80h |
